# OpenEHS - Project Plan

Schedule from MS Project, 2011-01-03 to 2011-03-31, A marks actual dates.

## Calendars

- Standard: Mon-Fri 08:00-12:00, 13:00-17:00; Sat-Sun off.

## Resources

| Resource |
| --- |
| Matt Kimber |
| Cameron Harp |
| Dahln Farnes |
| J.D. Russel |
| Kevin Russon |
| Peter Litster |
| Austyn Mahoney |
| Brian Sneddon |

## Schedule

| ID | WBS | Task | Type | Duration | Start | Finish | Complete | Remaining | Actual start | Constraint | Resources | Work | Actual work |
| --- | --- | --- | --- | --- | --- | --- | --- | --- | --- | --- | --- | --- | --- |
| 1 | 1 | **OpenEHS** |  | 64d | 2011-01-03 A | 2011-03-31 | 28% | 45.9d |  |  |  | 1517.15h | 269.9h |
| 2 | 1.1 | **Documentation** |  | 31d | 2011-01-03 A | 2011-02-14 | 64% | 11.27d |  |  |  | 86.15h | 15.9h |
| 3 | 1.1.1 | **Update Project Charter** |  | 6d | 2011-01-03 A | 2011-01-10 A | 100% |  |  |  |  |  |  |
| 4 | 1.1.1.1 | Merge Both Project Charters | manual | 6d | 2011-01-03 A | 2011-01-10 A | 100% |  |  | start no earlier than 2011-01-03 |  |  |  |
| 5 | 1.1.1.2 | Adjust Contents to New Requirements | manual | 6d | 2011-01-03 A | 2011-01-10 A | 100% |  |  |  |  |  |  |
| 6 | 1.1.2 | **Create Project Management Plan** |  | 16h? | 2011-01-15 | 2011-01-17 | 75% | 4h? | 2011-01-03 |  |  | 15.75h | 11.5h |
| 7 | 1.1.2.1 | Determine Tasks | manual | 1d | 2011-01-03 A | 2011-01-03 A | 100% |  |  |  | Matt Kimber [75%]; Peter Litster [25%] | 6.5h | 6.5h |
| 8 | 1.1.2.2 | Define WBS | manual | 0.25d? | 2011-01-03 A | 2011-01-03 | 75% | 0.06d? |  |  | Matt Kimber [50%]; Peter Litster [50%] | 1.25h | 1h |
| 9 | 1.1.2.3 | Determine Resources | manual | 1d? | 2011-01-03 A | 2011-01-03 | 50% | 0.5d? |  |  | Peter Litster | 8h | 4h |
| 10 | 1.1.3 | **Revise SSRS** |  | 11d | 2011-01-03 | 2011-01-17 | 58% | 4.58d | 2011-01-07 |  |  | 14.4h | 4.4h |
| 11 | 1.1.3.1 | Analyze Use Cases | manual | 1d? | 2011-01-10 A | 2011-01-10 | 50% | 0.5d? |  |  | Peter Litster [10%]; Kevin Russon [25%]; Austyn Mahoney [25%]; Brian Sneddon [5%]; J.D. Russel [25%]; Matt Kimber [10%] | 4.4h | 0.4h |
| 12 | 1.1.3.2 | Analyze Requirements | manual | 1d? | 2011-01-10 A | 2011-01-10 | 50% | 0.5d? |  |  | Austyn Mahoney [25%]; Brian Sneddon [25%]; J.D. Russel [25%]; Kevin Russon [25%] | 5h | 1h |
| 13 | 1.1.3.3 | Merge Two Existing SSRS Documents | manual | 1d? | 2011-01-07 A | 2011-01-07 | 75% | 0.25d? |  |  | Dahln Farnes [50%]; Peter Litster [50%] | 5h | 3h |
| 14 | 1.3.4 | **Create User Documentation** |  | 11d | 2011-01-31 | 2011-02-14 |  |  |  |  |  | 56h |  |
| 15 | 1.3.4.1 | Create "How to Add a Patient" | manual | 1d? | 2011-01-31 | 2011-01-31 |  |  |  |  | Peter Litster | 8h |  |
| 16 | 1.3.4.2 | Create "How to Remove a Patient" | manual | 1d? | 2011-01-31 | 2011-01-31 |  |  |  |  | Peter Litster | 8h |  |
| 17 | 1.3.4.3 | Create "How to Modify a Patient" | manual | 1d? | 2011-01-31 | 2011-01-31 |  |  |  |  | Peter Litster | 8h |  |
| 18 | 1.3.4.4 | Create "How to Bill a Patient" | manual | 1d? | 2011-01-31 | 2011-01-31 |  |  |  |  | Peter Litster | 8h |  |
| 19 | 1.3.4.5 | Create "How to Diagnose a Patient" | manual | 1d? | 2011-01-31 | 2011-01-31 |  |  |  |  | Peter Litster | 8h |  |
| 20 | 1.3.4.6 | Create "How to Prescribe Medication to a Patient" | manual | 1d? | 2011-01-31 | 2011-01-31 |  |  |  |  | Peter Litster | 8h |  |
| 21 | 1.3.4.7 | Create "How to Record a Patient Allergy" | manual | 1d? | 2011-01-31 | 2011-01-31 |  |  |  |  | Peter Litster | 8h |  |
| 22 | 1.2 | **Implementation** |  | 56d? | 2011-01-03 | 2011-03-19 | 25% | 42.22d? | 2011-01-05 |  |  | 1130h | 254h |
| 23 | 1.2.1 | **Create Database** |  | 9d | 2011-01-05 A | 2011-01-17 A | 100% |  |  |  |  | 232h | 232h |
| 24 | 1.2.1.1 | Script Database | manual | 9d | 2011-01-05 A | 2011-01-15 A | 100% |  |  |  | Cameron Harp | 72h | 72h |
| 25 | 1.2.1.2 | Create ERD | manual | 9d | 2011-01-05 A | 2011-01-15 A | 100% |  |  |  | Cameron Harp | 72h | 72h |
| 26 | 1.2.1.3 | Create Test Data | manual | 2d | 2011-01-15 A | 2011-01-17 A | 100% |  |  |  | Kevin Russon | 16h | 16h |
| 27 | 1.2.1.4 | Create Stored Procedures | manual | 9d | 2011-01-05 A | 2011-01-15 A | 100% |  |  |  | Cameron Harp | 72h | 72h |

| ID | WBS | Task | Type | Duration | Start | Finish | Complete | Remaining | Total slack | Resources | Work | Actual work |
| --- | --- | --- | --- | --- | --- | --- | --- | --- | --- | --- | --- | --- |
| 28 | 1.2.2 | **Develop Domain Models** |  | 19d | 2011-01-05 A | 2011-01-31 | 50% | 9.5d |  |  | 40h | 16h |
| 29 | 1.2.2.1 | Develop Patient | manual | 1d? | 2011-01-05 A | 2011-01-05 | 50% | 0.5d? |  | Matt Kimber | 8h | 4h |
| 30 | 1.2.2.2 | Develop Inventory | manual | 1d? | 2011-01-05 A | 2011-01-05 | 50% | 0.5d? |  | Matt Kimber | 8h | 4h |
| 31 | 1.2.2.3 | Develop Encounter | manual | 1d? | 2011-01-05 A | 2011-01-05 | 50% | 0.5d? |  | Matt Kimber | 8h | 4h |
| 32 | 1.2.2.4 | Develop Billing | manual | 1d? | 2011-01-05 A | 2011-01-05 | 50% | 0.5d? |  | Matt Kimber; Dahln Farnes; Cameron Harp | 16h | 4h |
| 33 | 1.2.3 | **Develop Data Layer** |  | 11d | 2011-01-17 A | 2011-01-31 | 11% | 9.82d |  |  | 58h | 6h |
| 34 | 1.2.3.1 | Create Repository Classes | manual | 2d? | 2011-01-17 | 2011-01-18 |  |  |  | Cameron Harp | 16h |  |
| 35 | 1.2.3.2 | Learn Entity Framework 4 | manual | 3d? | 2011-01-17 A | 2011-01-19 | 25% | 2.25d? |  | Cameron Harp; Matt Kimber | 42h | 6h |
| 36 | 1.2.3.3 | Look into Unit of Work Pattern | manual | 2d? | 2011-01-17 | 2011-01-18 |  |  |  |  |  |  |
| 37 | 1.2.4 | **Create Presentation Layer** |  | 21d | 2011-01-17 | 2011-02-14 |  |  |  |  | 48h |  |
| 38 | 1.2.4.1 | Design Layout | manual | 2d? | 2011-01-17 | 2011-01-18 |  |  |  | Austyn Mahoney | 16h |  |
| 39 | 1.2.4.2 | Create Inventory UI | manual | 1d? | 2011-01-17 | 2011-01-17 |  |  |  | Dahln Farnes | 8h |  |
| 40 | 1.2.4.3 | Create Patient UI | manual | 1d? | 2011-01-17 | 2011-01-17 |  |  |  | J.D. Russel | 8h |  |
| 41 | 1.2.4.4 | Create Encounter UI | manual | 1d? | 2011-01-17 | 2011-01-17 |  |  |  | Brian Sneddon | 8h |  |
| 42 | 1.2.4.5 | Create Billing UI | manual | 1d? | 2011-01-17 | 2011-01-17 |  |  |  | Matt Kimber | 8h |  |
| 43 | 1.2.4.6 | Develop Custom ASP.NET Membership Provider | manual | 1d? | 2011-01-17 | 2011-01-17 |  |  |  |  |  |  |
| 44 | 1.2.5 | **Test** |  | 46d | 2011-01-17 | 2011-03-19 |  |  |  |  | 752h |  |
| 45 | 1.2.5.1 | Develop Integration Tests | manual | 35d | 2011-01-17 | 2011-03-04 |  |  |  | Kevin Russon | 280h |  |
| 46 | 1.2.5.2 | Develop Unit Tests | manual | 35d | 2011-01-17 | 2011-03-04 |  |  |  | Kevin Russon | 280h |  |
| 47 | 1.2.5.3 | On-Site Integration Tests | manual | 12d | 2011-03-05 | 2011-03-19 |  |  |  | Matt Kimber; Cameron Harp | 192h |  |
| 48 | 1.3 | **Deployment** |  | 12d | 2011-03-05 | 2011-03-19 |  |  |  |  | 301h |  |
| 49 | 1.3.1 | **Install Project** |  | 0d? | 2011-03-05 | 2011-03-05 |  |  | 0d |  | 13h |  |
| 50 | 1.3.1.1 | **Install MySQL** |  | 8h? | 2011-03-05 | 2011-03-05 |  |  |  |  | 3h |  |
| 51 | 1.3.1.1.1 | Install MySQL Community Server | manual | 2h? | 2011-03-05 | 2011-03-05 |  |  |  | Cameron Harp | 2h |  |
| 52 | 1.3.1.1.2 | Install MySQL Toolbench | manual | 0.5h? | 2011-03-05 | 2011-03-05 |  |  |  | Cameron Harp | 0.5h |  |
| 53 | 1.3.1.1.3 | Install OpenEHS SQL Scripts | manual | 0.5h? | 2011-03-05 | 2011-03-05 |  |  |  | Cameron Harp | 0.5h |  |

| ID | WBS | Task | Type | Duration | Start | Finish | Resources | Work |
| --- | --- | --- | --- | --- | --- | --- | --- | --- |
| 54 | 1.3.1.2 | **Install Dependencies** |  | 8h? | 2011-03-05 | 2011-03-05 |  | 2h |
| 55 | 1.3.1.2.1 | Install .NET Framework 4 | manual | 0.5h? | 2011-03-05 | 2011-03-05 | Matt Kimber | 0.5h |
| 56 | 1.3.1.2.2 | Install IIS | manual | 1h? | 2011-03-05 | 2011-03-05 | Matt Kimber | 1h |
| 57 | 1.3.1.2.3 | Install ASP.NET MVC 3 | manual | 0.5h? | 2011-03-05 | 2011-03-05 | Matt Kimber | 0.5h |
| 58 | 1.3.1.3 | Install OpenEHS | manual | 1d? | 2011-03-05 | 2011-03-05 | J.D. Russel | 8h |
| 59 | 1.3.2 | On-Site Training | manual | 12d | 2011-03-05 | 2011-03-19 | Cameron Harp; Matt Kimber; J.D. Russel | 288h |
